# Cronograma

Schedule from MS Project, 2013-07-24 to 2013-11-08, status date 2013-10-03, costs in R$, A marks actual dates.

## Calendars

- Padrão: Mon-Fri 09:00-12:00, 13:00-18:00; Sat-Sun off. Exceptions (off unless hours are given): 2013-07-25 to 2013-07-29 (Revisão de Projeto pela Cartel), 2013-08-09 (Folga Extraordinária), 2013-09-28 09:00-12:00, 13:00-18:00.

## Resources

| Resource | Group | Rate |
| --- | --- | --- |
| Wagner | Cartel |  |
| Selma | Atis |  |
| Robson |  | 60 |

## Schedule

| ID | WBS | Task | Duration | Start | Finish | Predecessors | Complete | Remaining | Baseline start | Baseline finish | Baseline duration | Total slack | Constraint | Resources | Work | Actual work | Cost | Baseline cost | Actual cost |
| --- | --- | --- | --- | --- | --- | --- | --- | --- | --- | --- | --- | --- | --- | --- | --- | --- | --- | --- | --- |
| 1 | 1 | **Fase 1 - Endereçamento** | 14d | 2013-07-24 A | 2013-08-17 A |  | 100% |  | 2013-07-24 | 2013-08-27 | 21.58d |  |  |  | 125.15h | 125.15h | 7,509 | 7,509 | 7,509 |
| 2 | 1.1 | Levantamento de Requisitos | 1d | 2013-07-24 A | 2013-07-24 A |  | 100% |  | 2013-07-24 | 2013-07-24 | 1d |  |  | Wagner | 8h | 8h | 480 | 480 | 480 |
| 3 | 1.2 | Levantamento de Requisitos | 1d | 2013-07-24 A | 2013-07-24 A |  | 100% |  | 2013-07-24 | 2013-07-24 | 1d |  | start no earlier than 2013-07-24 | Selma | 8h | 8h | 480 | 480 | 480 |
| 4 | 1.3 | Revisão de Escopo | 7.15h | 2013-07-26 A | 2013-07-27 A | 2 | 100% |  | 2013-07-26 | 2013-07-27 | 7.15h |  |  | Wagner | 7.15h | 7.15h | 429 | 429 | 429 |
| 5 | 1.4 | Cadastramento dos endereços | 4h | 2013-07-30 A | 2013-07-30 A | 3 | 100% |  | 2013-07-30 | 2013-07-30 | 4h |  |  | Selma | 4h | 4h | 240 | 240 | 240 |
| 6 | 1.5 | Vinculo dos produtos ao endereço de reserva e faturamento | 4h | 2013-07-30 A | 2013-07-30 A | 5 | 100% |  | 2013-07-30 | 2013-07-30 | 4h |  |  | Selma | 4h | 4h | 240 | 240 | 240 |
| 7 | 1.6 | Cadastramento da quantidade de produtos por caixa | 4h | 2013-07-31 A | 2013-07-31 A | 6 | 100% |  | 2013-07-31 | 2013-07-31 | 4h |  |  | Selma | 4h | 4h | 240 | 240 | 240 |
| 8 | 1.7 | Habilitar o controle de endereço nos produtos e geração do saldo por endereço do estoque atual por lote | 8h | 2013-07-31 A | 2013-08-01 A | 7 | 100% |  | 2013-07-31 | 2013-08-01 | 8h |  |  | Selma | 8h | 8h | 480 | 480 | 480 |
| 9 | 1.8 | Habilitar o controle de endereço nos produtos e geração do saldo por endereço do estoque atual por lote | 4h | 2013-07-27 A | 2013-07-30 A | 4 | 100% |  | 2013-07-27 | 2013-07-30 | 4h |  |  | Wagner | 4h | 4h | 240 | 240 | 240 |
| 10 | 1.9 | Considerar o endereço de faturamento dos produtos no pedido de venda | 2h | 2013-08-01 A | 2013-08-01 A | 8 | 100% |  | 2013-08-01 | 2013-08-01 | 2h |  |  | Selma | 2h | 2h | 120 | 120 | 120 |
| 11 | 1.10 | Testes de funcionamento do processo de entrada/produção e faturamento de produtos | 8h | 2013-08-01 A | 2013-08-02 A | 10 | 100% |  | 2013-08-01 | 2013-08-02 | 8h |  |  | Selma | 8h | 8h | 480 | 480 | 480 |
| 12 | 1.11 | Testes de funcionamento do processo de entrada/produção e faturamento de produtos | 8h | 2013-07-30 A | 2013-08-03 A | 9 | 100% |  | 2013-07-30 | 2013-08-03 | 8h |  |  | Wagner | 8h | 8h | 480 | 480 | 480 |
| 13 | 1.12 | Geração da etiqueta a partir das entradas de mercadoria ou produção | 10h | 2013-08-03 A | 2013-08-07 A | 12 | 100% |  | 2013-08-03 | 2013-08-10 | 10h |  |  | Wagner | 10h | 10h | 600 | 600 | 600 |
| 14 | 1.13 | Geração do endereçamento a partir da etiqueta | 10h | 2013-08-07 A | 2013-08-10 A | 13 | 100% |  | 2013-08-10 | 2013-08-13 | 10h |  |  | Wagner | 10h | 10h | 600 | 600 | 600 |
| 15 | 1.14 | Geração de operação de transferencia a partir da etiqueta | 10h | 2013-08-10 A | 2013-08-13 A | 14 | 100% |  | 2013-08-13 | 2013-08-26 | 10h |  |  | Wagner | 10h | 10h | 600 | 600 | 600 |
| 16 | 1.15 | Testes das rotina de movimentação do material a partir da etiqueta | 10h | 2013-08-13 A | 2013-08-15 A | 11, 15 | 100% |  | 2013-08-02 | 2013-08-05 | 10h |  |  | Selma | 10h | 10h | 600 | 600 | 600 |
| 17 | 1.16 | Testes de funcionamento do processo de entrada/produção e faturamento de produtos utilizando o coletor | 10h | 2013-08-15 A | 2013-08-16 A | 16 | 100% |  | 2013-08-06 | 2013-08-07 | 10h |  |  | Selma | 10h | 10h | 600 | 600 | 600 |
| 18 | 1.17 | Testes de funcionamento do processo de entrada/produção e faturamento de produtos utilizando o coletor | 10h | 2013-08-13 A | 2013-08-17 A | 15 | 100% |  | 2013-08-26 | 2013-08-27 | 10h |  |  | Wagner | 10h | 10h | 600 | 600 | 600 |
| 19 | 2 | **Fase 2 - Expedição** | 30.16d | 2013-09-28 A | 2013-11-08 |  | 78% | 6.56d |  |  |  | 0d | start no earlier than 2013-09-28 |  | 230h | 180h | 13,800 |  | 10,800 |
| 20 | 2.1 | **Desenvolvimento (Fábrica de Software)** | 27.88d | 2013-09-28 A | 2013-11-05 |  | 92% | 2.28d |  |  |  | 0d |  |  | 196h | 180h | 11,760 |  | 10,800 |
| 21 | 2.1.1 | Cadastro de Transportadoras | 5h | 2013-09-28 A | 2013-09-28 A |  | 100% |  |  |  |  |  |  | Wagner | 5h | 5h | 300 |  | 300 |
| 22 | 2.1.2 | Cadastro de Operadores | 6h | 2013-10-01 A | 2013-10-01 A | 21 | 100% |  |  |  |  |  |  | Wagner | 6h | 6h | 360 |  | 360 |
| 23 | 2.1.3 | Cadastro Cartão de Volume | 10h | 2013-10-01 A | 2013-10-02 | 22 | 90% | 1h |  |  |  | 24d |  | Wagner | 10h | 9h | 600 |  | 540 |
| 24 | 2.1.4 | **Romaneio de Entrega** | 3.75d | 2013-10-03 A | 2013-10-08 A | 23 | 100% |  |  |  |  |  |  |  | 40h | 40h | 2,400 |  | 2,400 |
| 25 | 2.1.4.1 | Criação de romaneio separador por Transportadora, Notas e Volumes gerados no dia até hora de corte (16:00) | 10h | 2013-10-05 A | 2013-10-08 A |  | 100% |  |  |  |  |  |  | Wagner | 10h | 10h | 600 |  | 600 |
| 26 | 2.1.4.2 | Opção para manutenção do Romaneio permitindo inclusão manual de notas fiscais | 5h | 2013-10-08 A | 2013-10-08 A | 25 | 100% |  |  |  |  |  |  | Wagner | 5h | 5h | 300 |  | 300 |
| 27 | 2.1.4.3 | Envio de e-mail do romaneio para a transportadora | 15h | 2013-10-03 A | 2013-10-05 A |  | 100% |  |  |  |  |  |  | Robson | 15h | 15h | 900 |  | 900 |
| 28 | 2.1.4.4 | Opção para impressão do relatório de romaneio | 10h | 2013-10-05 A | 2013-10-07 A | 27 | 100% |  |  |  |  |  |  | Robson | 10h | 10h | 600 |  | 600 |
| 29 | 2.1.5 | Aglutinação de pedidos através da ordem de separação | 5h | 2013-10-08 A | 2013-10-09 A | 26 | 100% |  |  |  |  |  |  | Wagner | 5h | 5h | 300 |  | 300 |
| 30 | 2.1.6 | Monitor da Expedição | 25h | 2013-10-07 A | 2013-10-11 A | 28 | 100% |  |  |  |  |  |  | Robson | 25h | 25h | 1,500 |  | 1,500 |

| ID | WBS | Task | Duration | Start | Finish | Predecessors | Complete | Remaining | Total slack | Free slack | Constraint | Resources | Work | Actual work | Cost | Actual cost |
| --- | --- | --- | --- | --- | --- | --- | --- | --- | --- | --- | --- | --- | --- | --- | --- | --- |
| 31 | 2.1.7 | **Separação** | 14.75d | 2013-10-09 A | 2013-10-30 | 29 | 86% | 2.01d | 0d |  |  |  | 55h | 47.5h | 3,300 | 2,850 |
| 32 | 2.1.7.1 | Leitura da etiqueta com a matricula do operador | 5h | 2013-10-09 A | 2013-10-09 A |  | 100% |  |  |  |  | Wagner | 5h | 5h | 300 | 300 |
| 33 | 2.1.7.2 | Convocação automática do separador | 10h | 2013-10-12 A | 2013-10-15 A | 32 | 100% |  |  |  |  | Wagner | 10h | 10h | 600 | 600 |
| 34 | 2.1.7.3 | Separação por endereço | 10h | 2013-10-15 A | 2013-10-16 A | 33 | 100% |  |  |  |  | Wagner | 10h | 10h | 600 | 600 |
| 35 | 2.1.7.4 | Leitura por código de barras unitário (Ean 13) ou caixas (Ean 14) | 15h | 2013-10-22 A | 2013-10-23 A | 34 | 100% |  |  |  | start no earlier than 2013-10-22 | Wagner | 15h | 15h | 900 | 900 |
| 36 | 2.1.7.5 | Seleção do Cartão de Volume | 5h | 2013-10-23 A | 2013-10-26 A | 35 | 100% |  |  |  |  | Wagner | 5h | 5h | 300 | 300 |
| 37 | 2.1.7.6 | Controle de Divergencia - Reliberação do pedido com a nova quantidade a partir de operador habilitado, utilizará uma aprovação de alçada | 10h | 2013-10-26 A | 2013-10-30 | 36 | 25% | 7.5h | 0d |  |  | Wagner | 10h | 2.5h | 600 | 150 |
| 38 | 2.1.8 | **Montagem dos Volumes** | 4.88d | 2013-10-30 A | 2013-11-05 | 37 | 85% | 0.73d | 0d |  |  |  | 50h | 42.5h | 3,000 | 2,550 |
| 39 | 2.1.8.1 | Seleção do Cartão do Volume | 10h | 2013-10-30 A | 2013-11-02 |  | 75% | 2.5h | 1.69d | 0d |  | Wagner | 10h | 7.5h | 600 | 450 |
| 40 | 2.1.8.2 | Seleção dos itens do Volume | 10h | 2013-11-02 A | 2013-11-05 | 39 | 75% | 2.5h | 0d |  |  | Wagner | 10h | 7.5h | 600 | 450 |
| 41 | 2.1.8.3 | Calculo do Peso Liquido a partir da quantidade e leitura do peso bruto a partir da balança | 10h | 2013-10-30 A | 2013-10-31 A | 28 | 100% |  |  |  |  | Robson | 10h | 10h | 600 | 600 |
| 42 | 2.1.8.4 | Controle de alçada para permitir alteração de peso líquido e/ou bruto | 10h | 2013-10-31 A | 2013-11-01 A | 41 | 100% |  |  |  |  | Robson | 10h | 10h | 600 | 600 |
| 43 | 2.1.8.5 | Impressão de etiqueta | 5h | 2013-11-01 A | 2013-11-02 | 42 | 50% | 2.5h | 1.91d |  |  | Robson | 5h | 2.5h | 300 | 150 |
| 44 | 2.1.8.6 | Geração da nota fiscal por volume | 5h | 2013-11-02 A | 2013-11-04 A | 43 | 100% |  |  |  |  | Robson | 5h | 5h | 300 | 300 |
| 45 | 2.2 | **Validação e Apoio ao Usuário** | 2.28d | 2013-11-06 | 2013-11-08 | 20 |  |  | 0d |  |  |  | 34h |  | 2,040 |  |
| 46 | 2.2.1 | Validação e Apoio ao Usuário | 17h | 2013-11-06 | 2013-11-08 |  |  |  | 0.16d |  |  | Selma | 17h |  | 1,020 |  |
| 47 | 2.2.2 | Validação e Apoio ao Usuário | 17h | 2013-11-06 | 2013-11-08 |  |  |  | 0d |  |  | Robson | 17h |  | 1,020 |  |
